# Projeto Algar · BCAPI / BC Billing

Schedule from MS Project XML, 2026-09-29 to 2026-10-30, A marks actual dates.
Binário Cloud

## Calendars

- Padrão Brasil: Mon-Fri 08:00-12:00, 13:00-17:00; Sat-Sun off. Exceptions (off unless hours are given): 2026-10-12.

## Resources

| Resource |
| --- |
| Não atribuído |
| Binário Cloud |
| Algar |

## Schedule

| ID | WBS | Task | Duration | Start | Finish | Complete | Constraint | Resources | Responsável (empresa) | Status no painel |
| --- | --- | --- | --- | --- | --- | --- | --- | --- | --- | --- |
| 1 | 1 | **Marco 0 — Kickoff** | 10d | 2026-10-02 | 2026-10-16 | 57% |  |  |  |  |
| 2 | 1.1 | Devolução da minuta contratual para Binario | 4d | 2026-10-06 A | 2026-10-09 | 50% | start no earlier than 2026-10-06 | Binário Cloud; Algar | Binário + Algar | Em andamento |
| 3 | 1.2 | Publicar painel e liberar usuarios para acompanhamento | 8d | 2026-10-06 A | 2026-10-16 | 50% | start no earlier than 2026-10-06 | Binário Cloud | Binário | Em andamento |
| 4 | 1.3 | Reunião de Kickoff 08/10 - 16h | 2d | 2026-10-07 A | 2026-10-08 A | 100% | start no earlier than 2026-10-07 | Binário Cloud | Binário | Concluído |
| 5 | 1.4 | Definir pontos focais e cadência de acompanhamento | 2d | 2026-10-07 A | 2026-10-08 A | 100% | start no earlier than 2026-10-07 | Binário Cloud | Binário | Concluído |
| 6 | 1.5 | Validação de Marcos, responsáveis e datas | 7d | 2026-10-07 A | 2026-10-16 | 50% | start no earlier than 2026-10-07 | Binário Cloud | Binário | Em andamento |
| 7 | 1.6 | Elaboração da TAP | 6d | 2026-10-08 A | 2026-10-16 | 50% | start no earlier than 2026-10-08 | Binário Cloud | Binário | Em andamento |
| 8 | 1.7 | Envio/Assinatura da TAP | 10d | 2026-10-02 | 2026-10-16 |  | start no earlier than 2026-10-02 | Binário Cloud; Algar | Binário + Algar | Não iniciado |
| 9 | 2 | **Marco 1 — SSO no portal B2B** | 23d | 2026-09-29 | 2026-10-30 | 10% |  |  |  |  |
| 10 | 2.1 | Concluir a configuração de OpenID Connect, Keycloak e Keystone e trocar o acesso de sandbox pelo fluxo produtivo | 12d | 2026-10-05 | 2026-10-21 |  | start no earlier than 2026-10-05 | Binário Cloud; Algar | Binário + Algar | Não iniciado |
| 11 | 2.2 | Incluir a URL do BCP no trusted dashboard da federação do Keystone (stage SP) para validar o SSO | 3d | 2026-10-07 A | 2026-10-09 | 50% | start no earlier than 2026-10-07 | Binário Cloud; Algar | Binário + Algar | Em andamento |
| 12 | 2.3 | Testar SSO no ambiente Sandbox | 9d | 2026-09-29 | 2026-10-09 |  | start no earlier than 2026-09-29 | Binário Cloud | Binário | Bloqueada |
| 13 | 2.4 | Configurar Identity Provider e o mapping no Keystone | 1d | 2026-10-09 A | 2026-10-09 | 50% | start no earlier than 2026-10-09 | Binário Cloud | Binário | Em andamento |
| 14 | 2.5 | Validar os cenários de MFA, token expirado e usuário removido do grupo | 1d | 2026-10-23 | 2026-10-23 |  | start no earlier than 2026-10-23 | Binário Cloud | Binário | Bloqueada |
| 15 | 2.6 | Liberar o acesso ao Mesa de TI e criar os usuários solicitados | 3d | 2026-10-07 | 2026-10-09 |  | start no earlier than 2026-10-07 |  | A definir | Não iniciado |
| 16 | 2.7 | Criar App Registration no Azure , com redirect URIs de dev, hml e prod | 4d | 2026-10-08 | 2026-10-14 |  | start no earlier than 2026-10-08 | Binário Cloud | Binário | Não iniciado |
| 17 | 2.8 | Consolidar a federação do Keystone nos templates do director (hoje feita à mão no stage) | 7d | 2026-10-13 A | 2026-10-21 | 50% | start no earlier than 2026-10-13 | Algar | Algar | Em andamento |
| 18 | 2.9 | Configurar o Identity Hub como provedor de identidade no Keystone de produção (São Paulo e Uberlândia) | 9d | 2026-10-13 | 2026-10-23 |  | start no earlier than 2026-10-13 |  | A definir | Não iniciado |
| 19 | 2.10 | Definir as claims e grupos do Azure e o mapeamento para projeto e role no Keystone | 4d | 2026-10-14 | 2026-10-19 |  | start no earlier than 2026-10-14 | Binário Cloud | Binário | Não iniciado |
| 20 | 2.11 | Ajuste do Backend do portal para o fluxo OIDC | 6d | 2026-10-15 | 2026-10-22 |  | start no earlier than 2026-10-15 | Algar | Algar | Não iniciado |
| 21 | 2.12 | Mapping no Keystone | 4d | 2026-10-19 | 2026-10-22 |  | start no earlier than 2026-10-19 | Binário Cloud | Binário | Não iniciado |
| 22 | 2.13 | Criar os usuários do Mesa de TI automaticamente via Blazon (até lá, a Binário cria sob demanda) | 6d | 2026-10-19 | 2026-10-26 |  | start no earlier than 2026-10-19 | Algar | Algar | Não iniciado |
| 23 | 2.14 | Ajustar Frontend (botão de login com Microsoft, callback, mensagens de erro) | 5d | 2026-10-20 | 2026-10-26 |  | start no earlier than 2026-10-20 | Algar | Algar | Não iniciado |
| 24 | 2.15 | Documentar e alinhar virada | 2d | 2026-10-29 | 2026-10-30 |  | start no earlier than 2026-10-29 | Binário Cloud | Binário | Não iniciado |

Notes:
- 2: Responsável: Binário + Algar · Diogo Lerison / Emerson Alexandre, Julis Rimet e Flavio Janones / Status no painel: Em andamento / Origem: atividade definida no planejamento / Comentário: Aguardando retorno Emerson / Julis / Produtos · Responsável: Emerson Alexandre, Julis Rimet e Flavio Janones / Responsável (pessoa): Diogo Lerison / Emerson Alexandre, Julis Rimet e Flavio Janones
- 3: Responsável: Binário · Diogo Lerison / Status no painel: Em andamento / Origem: atividade definida no planejamento / Responsável (pessoa): Diogo Lerison
- 4: Responsável: Binário · Diogo Lerison / Status no painel: Concluído / Origem: atividade definida no planejamento / Responsável (pessoa): Diogo Lerison
- 5: Responsável: Binário · Diogo Lerison / Status no painel: Concluído / Origem: atividade definida no planejamento / Responsável (pessoa): Diogo Lerison
- 6: Responsável: Binário · Diogo Lerison / Status no painel: Em andamento / Origem: atividade definida no planejamento / Responsável (pessoa): Diogo Lerison
- 7: Responsável: Binário · Diogo Lerison / Status no painel: Em andamento / Origem: atividade definida no planejamento / Responsável (pessoa): Diogo Lerison
- 8: Responsável: Binário + Algar · Diogo Lerison / Algar / Status no painel: Não iniciado / Origem: atividade definida no planejamento / Sem datas no ClickUp: usadas as datas do marco / Responsável (pessoa): Diogo Lerison / Algar
- 10: Responsável: Binário + Algar · Diogo Lerison / Daniel Prado e Luiz Gustavo / Status no painel: Não iniciado / Origem: atividade definida no planejamento / Comentário: Habilitar autenticação SSO e substituir o acesso de sandbox pelo fluxo produtivo. · Responsável: Daniel Prado e Luiz Gustavo / Responsável (pessoa): Diogo Lerison / Daniel Prado e Luiz Gustavo
- 11: Responsável: Binário + Algar · Diogo Lerison / Daniel Prado / Status no painel: Em andamento / Origem: atividade definida no planejamento / Comentário: trusted_dashboard = · Responsável: Daniel Prado / Responsável (pessoa): Diogo Lerison / Daniel Prado
- 12: Responsável: Binário · Joab de Araújo Silva / Status no painel: Bloqueada / Origem: atividade definida no planejamento / Responsável (pessoa): Joab de Araújo Silva
- 13: Responsável: Binário · Diogo Lerison / Status no painel: Em andamento / Origem: atividade definida no planejamento / Comentário: ja realizado nas novas regiões Necessario ajuste em SP e Uberlandia, Responsável: Daniel Prado / Responsável (pessoa): Diogo Lerison
- 14: Responsável: Binário · Joab de Araújo Silva / Status no painel: Bloqueada / Origem: atividade definida no planejamento / Responsável (pessoa): Joab de Araújo Silva
- 15: Responsável: A definir · A definir / Status no painel: Não iniciado / Origem: atividade definida no planejamento / Responsável (pessoa): A definir
- 16: Responsável: Binário · Diogo Lerison / Status no painel: Não iniciado / Origem: atividade definida no planejamento / Responsável (pessoa): Diogo Lerison
- 17: Responsável: Algar · Glauberson / Status no painel: Em andamento / Origem: atividade definida no planejamento / Comentário: Responsável Algar Glauberson / Responsável (pessoa): Glauberson
- 18: Responsável: A definir · A definir / Status no painel: Não iniciado / Origem: atividade definida no planejamento / Responsável (pessoa): A definir
- 19: Responsável: Binário · Diogo Lerison / Status no painel: Não iniciado / Origem: atividade definida no planejamento / Responsável (pessoa): Diogo Lerison
- 20: Responsável: Algar · Algar (a definir) / Status no painel: Não iniciado / Origem: atividade definida no planejamento / Comentário: (login, troca de token, sessão, logout) / Responsável (pessoa): Algar (a definir)
- 21: Responsável: Binário · Diogo Lerison / Status no painel: Não iniciado / Origem: atividade definida no planejamento / Responsável (pessoa): Diogo Lerison
- 22: Responsável: Algar · Algar (a definir) / Status no painel: Não iniciado / Origem: atividade definida no planejamento / Comentário: Pedido do Julis 02/10 / Responsável (pessoa): Algar (a definir)
- 23: Responsável: Algar · Algar (a definir) / Status no painel: Não iniciado / Origem: atividade definida no planejamento / Comentário: L / Responsável (pessoa): Algar (a definir)
- 24: Responsável: Binário · Joab de Araújo Silva / Diogo Lerison / Status no painel: Não iniciado / Origem: atividade definida no planejamento / Responsável (pessoa): Joab de Araújo Silva / Diogo Lerison

| ID | WBS | Task | Duration | Start | Finish | Complete | Constraint | Resources | Responsável (empresa) | Status no painel |
| --- | --- | --- | --- | --- | --- | --- | --- | --- | --- | --- |
| 25 | 3 | **Marco 2 — Redirect do BCP API para o Portal B2B** | 17d | 2026-10-07 | 2026-10-30 | 38% |  |  |  |  |
| 26 | 3.1 | Confirmar o sistema de destino | 3d | 2026-10-07 A | 2026-10-09 A | 100% | start no earlier than 2026-10-07 | Binário Cloud; Algar | Binário + Algar | Concluído |
| 27 | 3.2 | Publicar o painel na porta 443 | 5d | 2026-10-07 A | 2026-10-14 | 50% | start no earlier than 2026-10-07 | Binário Cloud | Binário | Em andamento |
| 28 | 3.3 | Definir o fromato da URL e contexto assinado | 4d | 2026-10-08 A | 2026-10-14 | 50% | start no earlier than 2026-10-08 | Algar | Algar | Em andamento |
| 29 | 3.4 | Criar no Backend o Endpoint que recebe e valida | 5d | 2026-10-15 | 2026-10-21 |  | start no earlier than 2026-10-15 | Algar | Algar | Não iniciado |
| 30 | 3.5 | Exibir botão de custo apenas para perfil financeiro do Cloud Plus | 5d | 2026-10-15 A | 2026-10-21 A | 100% | start no earlier than 2026-10-15 | Binário Cloud | Binário | Concluído |
| 31 | 3.6 | Teste ponta a ponta | 4d | 2026-10-27 | 2026-10-30 |  | start no earlier than 2026-10-27 | Binário Cloud | Binário | Não iniciado |
| 32 | 3.7 | Criar no front a rota que leva o usuário para a tela certa | 17d | 2026-10-07 | 2026-10-30 |  | start no earlier than 2026-10-07 | Algar | Algar | Não iniciado |
| 33 | 3.8 | Configurar o redirect em produção | 17d | 2026-10-07 | 2026-10-30 |  | start no earlier than 2026-10-07 |  | A definir | Não iniciado |
| 34 | 4 | **Marco 3 — API e SKU e Flavors** | 17d | 2026-10-07 | 2026-10-30 | 5% |  |  |  |  |
| 35 | 4.1 | Envio do Link da documentação | 7d | 2026-10-07 | 2026-10-16 |  | start no earlier than 2026-10-07 |  | A definir | Não iniciado |
| 36 | 4.2 | Detalhar solicitações da API | 5d | 2026-10-08 A | 2026-10-15 | 50% | start no earlier than 2026-10-08 | Binário Cloud | Binário | Em andamento |
| 37 | 4.3 | Levantamento necessidade de preço ou especificação | 6d | 2026-10-08 | 2026-10-16 |  | start no earlier than 2026-10-08 | Binário Cloud | Binário | Não iniciado |
| 38 | 4.4 | Mapear de onde vêm os SKUs e como eles se ligam aos flavors do Nova | 3d | 2026-10-13 | 2026-10-15 |  | start no earlier than 2026-10-13 | Binário Cloud | Binário | Não iniciado |
| 39 | 4.5 | Montar o contrato da API (OpenAPI) e validar com o consumidor | 3d | 2026-10-16 | 2026-10-20 |  | start no earlier than 2026-10-16 | Binário Cloud | Binário | Não iniciado |
| 40 | 4.6 | Definir a autenticação da API | 3d | 2026-10-16 | 2026-10-20 |  | start no earlier than 2026-10-16 | Binário Cloud | Binário | Não iniciado |
| 41 | 4.7 | Entendimento da demanda | 3d | 2026-10-16 | 2026-10-20 |  | start no earlier than 2026-10-16 | Binário Cloud | Binário | Não iniciado |
| 42 | 4.8 | Implementar o endpoint com a transformação para o formato deles | 5d | 2026-10-21 | 2026-10-27 |  | start no earlier than 2026-10-21 | Binário Cloud | Binário | Não iniciado |
| 43 | 4.9 | Teste, documentação e deploy | 3d | 2026-10-27 | 2026-10-29 |  | start no earlier than 2026-10-27 | Binário Cloud | Binário | Não iniciado |
| 44 | 4.10 | Homologar | 2d | 2026-10-29 | 2026-10-30 |  | start no earlier than 2026-10-29 | Binário Cloud; Algar | Binário + Algar | Não iniciado |
| 45 | 5 | **Marco 4 — Novas regiões** | 17d | 2026-10-05 | 2026-10-28 | 9% |  |  |  |  |
| 46 | 5.1 | Estimar esforço ampliação de casa decimal | 8d | 2026-10-05 A | 2026-10-15 | 50% | start no earlier than 2026-10-05 | Binário Cloud | Binário | Em andamento |
| 47 | 5.2 | Ajuste de casas decimais | 5d | 2026-10-05 | 2026-10-09 |  | start no earlier than 2026-10-05 | Binário Cloud | Binário | Não iniciado |
| 48 | 5.3 | Restabelecer o staging de São Paulo | 9d | 2026-10-05 | 2026-10-16 |  | start no earlier than 2026-10-05 |  | A definir | Não iniciado |
| 49 | 5.4 | Repassar informações e requisitos da solução para a operação | 9d | 2026-10-05 | 2026-10-16 |  | start no earlier than 2026-10-05 |  | A definir | Não iniciado |
| 50 | 5.5 | Enviar as diretrizes de dimensionamento | 3d | 2026-10-07 A | 2026-10-09 A | 100% | start no earlier than 2026-10-07 | Binário Cloud | Binário | Concluído |
| 51 | 5.6 | Definir o ambiente inicial da coleta Canonical: staging SP, Fortaleza ou Porto Alegre | 7d | 2026-10-07 | 2026-10-16 |  | start no earlier than 2026-10-07 |  | A definir | Não iniciado |
| 52 | 5.7 | Definir a cobrança por roteador/projeto e por banda (avaliar aditivo contratual com Produtos) | 7d | 2026-10-07 | 2026-10-16 |  | start no earlier than 2026-10-07 |  | A definir | Não iniciado |
| 53 | 5.8 | Começar coleta Fortaleza | 12d | 2026-10-07 | 2026-10-23 |  | start no earlier than 2026-10-07 | Binário Cloud | Binário | Não iniciado |
| 54 | 5.9 | Deploy + Validação | 12d | 2026-10-07 | 2026-10-23 |  | start no earlier than 2026-10-07 | Binário Cloud | Binário | Não iniciado |
| 55 | 5.10 | Começar coleta Porto Alegre | 12d | 2026-10-07 | 2026-10-23 |  | start no earlier than 2026-10-07 | Binário Cloud | Binário | Não iniciado |
| 56 | 5.11 | Deploy + Validação | 12d | 2026-10-07 | 2026-10-23 |  | start no earlier than 2026-10-07 | Binário Cloud | Binário | Não iniciado |
| 57 | 5.12 | Desabilitar o menu da calculadora da Binário na V1 ou apontá-lo para o endereço interno (VPN) | 4d | 2026-10-13 | 2026-10-16 |  | start no earlier than 2026-10-13 |  | A definir | Não iniciado |
| 58 | 5.13 | Ajustar as VMs da POC para produção (nomes, rede, recursos e isolamento dos serviços) | 9d | 2026-10-13 | 2026-10-23 |  | start no earlier than 2026-10-13 |  | A definir | Não iniciado |
| 59 | 5.14 | Gerar a chave privada e o CSR e emitir um único certificado para os dois domínios | 5d | 2026-10-15 | 2026-10-21 |  | start no earlier than 2026-10-15 |  | A definir | Não iniciado |
| 60 | 5.15 | Criar o seletor de região no painel de consumo | 6d | 2026-10-19 | 2026-10-26 |  | start no earlier than 2026-10-19 | Binário Cloud | Binário | Não iniciado |
| 61 | 5.16 | Liberar firewall e acesso externo conforme domínio e local de hospedagem | 6d | 2026-10-21 | 2026-10-28 |  | start no earlier than 2026-10-21 |  | A definir | Não iniciado |

Notes:
- 26: Responsável: Binário + Algar · Diogo Lerison / Algar / Status no painel: Concluído / Origem: atividade definida no planejamento / Comentário: sandbox --> https://sandbox-billing.cloudalgar.com.br/api/openstack/skyline/api/v1/sso/go produção --> https://consumo.cloudalgar.com.br/api/openstack/skyline/api/v1/sso/go Definir o novo nome , confirmar se consumo.cloudalgar.... Confirmar o sistema de destino: billing.cloudalgar.com.br (visão do cliente), não o Mesa de TI / Responsável (pessoa): Diogo Lerison / Algar
- 27: Responsável: Binário · Joab de Araújo Silva / Status no painel: Em andamento / Origem: atividade definida no planejamento / Comentário: Publicar o painel produtivo na porta 443 (hoje responde na 8080), com link limpo / Responsável (pessoa): Joab de Araújo Silva
- 28: Responsável: Algar · Algar (a definir) / Status no painel: Em andamento / Origem: atividade definida no planejamento / Responsável (pessoa): Algar (a definir)
- 29: Responsável: Algar · Algar (a definir) / Status no painel: Não iniciado / Origem: atividade definida no planejamento / Responsável (pessoa): Algar (a definir)
- 30: Responsável: Binário · Diogo Lerison / Status no painel: Concluído / Origem: atividade definida no planejamento / Comentário: Role Financeiro existente. / Responsável (pessoa): Diogo Lerison
- 31: Responsável: Binário · Diogo Lerison / Joab de Araújo Silva / Status no painel: Não iniciado / Origem: atividade definida no planejamento / Responsável (pessoa): Diogo Lerison / Joab de Araújo Silva
- 32: Responsável: Algar · Algar (a definir) / Status no painel: Não iniciado / Origem: atividade definida no planejamento / Sem datas no ClickUp: usadas as datas do marco / Responsável (pessoa): Algar (a definir)
- 33: Responsável: A definir · A definir / Status no painel: Não iniciado / Origem: atividade definida no planejamento / Sem datas no ClickUp: usadas as datas do marco / Responsável (pessoa): A definir
- 35: Responsável: A definir · A definir / Status no painel: Não iniciado / Origem: atividade definida no planejamento / Comentário: Enviar o link para o time Algar (endpoints da API de SKUs e flavors, já existente no pacote) / Responsável (pessoa): A definir
- 36: Responsável: Binário · Guilherme Soares / Status no painel: Em andamento / Origem: atividade definida no planejamento / Comentário: Detalhar as solicitações da API de SKUs e flavors para centralização de custos (relatórios, Snowflake) / Responsável (pessoa): Guilherme Soares
- 37: Responsável: Binário · Guilherme Lopes / Status no painel: Não iniciado / Origem: atividade definida no planejamento / Comentário: Entender com o time consumidor o formato esperado e se precisa de preço ou só de especificação / Responsável (pessoa): Guilherme Lopes
- 38: Responsável: Binário · Guilherme Lopes / Status no painel: Não iniciado / Origem: atividade definida no planejamento / Responsável (pessoa): Guilherme Lopes
- 39: Responsável: Binário · Guilherme Lopes / Status no painel: Não iniciado / Origem: atividade definida no planejamento / Responsável (pessoa): Guilherme Lopes
- 40: Responsável: Binário · Guilherme Soares / Status no painel: Não iniciado / Origem: atividade definida no planejamento / Responsável (pessoa): Guilherme Soares
- 41: Responsável: Binário · Guilherme Soares / Diogo Lerison / Status no painel: Não iniciado / Origem: atividade definida no planejamento / Responsável (pessoa): Guilherme Soares / Diogo Lerison
- 42: Responsável: Binário · Guilherme Lopes / Status no painel: Não iniciado / Origem: atividade definida no planejamento / Responsável (pessoa): Guilherme Lopes
- 43: Responsável: Binário · Guilherme Lopes / Status no painel: Não iniciado / Origem: atividade definida no planejamento / Responsável (pessoa): Guilherme Lopes
- 44: Responsável: Binário + Algar · Diogo Lerison / Guilherme Lopes / Joab de Araújo Silva / Algar / Status no painel: Não iniciado / Origem: atividade definida no planejamento / Responsável (pessoa): Diogo Lerison / Guilherme Lopes / Joab de Araújo Silva / Algar
- 46: Responsável: Binário · Guilherme Soares / Status no painel: Em andamento / Origem: atividade definida no planejamento / Comentário: Estimar o esforço para ampliar de 3 para 6 casas decimais (banco e interface) Esforço alto / Responsável (pessoa): Guilherme Soares
- 47: Responsável: Binário · Guilherme Soares / Status no painel: Não iniciado / Origem: atividade definida no planejamento / Responsável (pessoa): Guilherme Soares
- 48: Responsável: A definir · A definir / Status no painel: Não iniciado / Origem: atividade definida no planejamento / Responsável (pessoa): A definir
- 49: Responsável: A definir · A definir / Status no painel: Não iniciado / Origem: atividade definida no planejamento / Responsável (pessoa): A definir
- 50: Responsável: Binário · Joab de Araújo Silva / Guilherme Lopes / Guilherme Soares / Status no painel: Concluído / Origem: atividade definida no planejamento / Comentário: (CPU, memória, disco, redundância) 3 de produção, servidor atual utilizado para POC será usado para teste IP privado para configuração do VIP Flavor 8-32 volume: 500Gb Possibilidade de alto uso de disco ser os logs do Gitlab / Responsável (pessoa): Joab de Araújo Silva / Guilherme Lopes / Guilherme Soares
- 51: Responsável: A definir · A definir / Status no painel: Não iniciado / Origem: atividade definida no planejamento / Responsável (pessoa): A definir
- 52: Responsável: A definir · A definir / Status no painel: Não iniciado / Origem: atividade definida no planejamento / Responsável (pessoa): A definir
- 53: Responsável: Binário · Guilherme Soares / Status no painel: Não iniciado / Origem: atividade definida no planejamento / Responsável (pessoa): Guilherme Soares
- 54: Responsável: Binário · Guilherme Soares / Status no painel: Não iniciado / Origem: atividade definida no planejamento / Responsável (pessoa): Guilherme Soares
- 55: Responsável: Binário · Guilherme Soares / Status no painel: Não iniciado / Origem: atividade definida no planejamento / Responsável (pessoa): Guilherme Soares
- 56: Responsável: Binário · Guilherme Soares / Status no painel: Não iniciado / Origem: atividade definida no planejamento / Responsável (pessoa): Guilherme Soares
- 57: Responsável: A definir · A definir / Status no painel: Não iniciado / Origem: atividade definida no planejamento / Responsável (pessoa): A definir
- 58: Responsável: A definir · A definir / Status no painel: Não iniciado / Origem: atividade definida no planejamento / Responsável (pessoa): A definir
- 59: Responsável: A definir · A definir / Status no painel: Não iniciado / Origem: atividade definida no planejamento / Responsável (pessoa): A definir
- 60: Responsável: Binário · Joab de Araújo Silva / Status no painel: Não iniciado / Origem: atividade definida no planejamento / Responsável (pessoa): Joab de Araújo Silva
- 61: Responsável: A definir · A definir / Status no painel: Não iniciado / Origem: atividade definida no planejamento / Responsável (pessoa): A definir

| ID | WBS | Task | Duration | Start | Finish | Complete | Constraint | Resources | Responsável (empresa) | Responsável (pessoa) | Status no painel |
| --- | --- | --- | --- | --- | --- | --- | --- | --- | --- | --- | --- |
| 62 | 6 | **Marco 5 — Relatório de utilização de VMs** | 10d | 2026-10-02 | 2026-10-16 |  |  |  |  |  |  |
| 63 | 6.1 | Entender quais métricas, o agrupamento, a frequência e o formato do relatório | 10d | 2026-10-02 | 2026-10-16 |  | start no earlier than 2026-10-02 |  | A definir | A definir | Não iniciado |
| 64 | 6.2 | Verificar Origem dos dados e histórico | 10d | 2026-10-02 | 2026-10-16 |  | start no earlier than 2026-10-02 |  | A definir | A definir | Não iniciado |
| 65 | 6.3 | Montar um rascunho do relatório e validar | 10d | 2026-10-02 | 2026-10-16 |  | start no earlier than 2026-10-02 |  | A definir | A definir | Não iniciado |
| 66 | 6.4 | Implementar a extração | 10d | 2026-10-02 | 2026-10-16 |  | start no earlier than 2026-10-02 |  | A definir | A definir | Não iniciado |
| 67 | 6.5 | Automaticar a geração, se for recorrente. | 10d | 2026-10-02 | 2026-10-16 |  | start no earlier than 2026-10-02 |  | A definir | A definir | Não iniciado |
| 68 | 7 | **Marco 6 — Alarmística de coleta + chamados Jira** | 17d | 2026-10-07 | 2026-10-30 | 6% |  |  |  |  |  |
| 69 | 7.1 | Avaliar a integração dos alertas com o Jira ou canal operacional equivalente (e-mail) | 5d | 2026-10-07 | 2026-10-14 |  | start no earlier than 2026-10-07 |  | A definir | A definir | Não iniciado |
| 70 | 7.2 | Mitigação falha na coleta | 5d | 2026-10-08 A | 2026-10-15 | 50% | start no earlier than 2026-10-08 | Binário Cloud | Binário | Guilherme Lopes / Tiago Gomes de Oliveira | Em andamento |
| 71 | 7.3 | Definir o que é falha de coleta (sem dados por X horas, erro de API, atraso de eventos) e a severidade de cada caso | 3d | 2026-10-13 | 2026-10-15 |  | start no earlier than 2026-10-13 |  | A definir | A definir | Não iniciado |
| 72 | 7.4 | Levantar no Jira da Algar o projeto/fila, o tipo de chamado, os campos obrigatórios e a prioridade | 4d | 2026-10-13 | 2026-10-16 |  | start no earlier than 2026-10-13 |  | A definir | A definir | Não iniciado |
| 73 | 7.5 | Liberar credencial e acesso à API do Jira para abertura automática de chamados | 2d | 2026-10-16 | 2026-10-19 |  | start no earlier than 2026-10-16 |  | A definir | A definir | Não iniciado |
| 74 | 7.6 | Configurar o monitoramento da coleta por região (Uberlândia, São Paulo, Nordeste e Sul) | 5d | 2026-10-19 | 2026-10-23 |  | start no earlier than 2026-10-19 |  | A definir | A definir | Não iniciado |
| 75 | 7.7 | Configurar o alarme e a integração que abre o chamado no Jira automaticamente | 4d | 2026-10-21 | 2026-10-26 |  | start no earlier than 2026-10-21 |  | A definir | A definir | Não iniciado |
| 76 | 7.8 | Testar simulando uma parada da coleta (alarme disparado e chamado aberto no Jira) | 2d | 2026-10-27 | 2026-10-28 |  | start no earlier than 2026-10-27 |  | A definir | A definir | Não iniciado |
| 77 | 7.9 | Documentar o fluxo de atendimento: quem recebe o chamado e o prazo por severidade (SLA da proposta) | 2d | 2026-10-29 | 2026-10-30 |  | start no earlier than 2026-10-29 |  | A definir | A definir | Não iniciado |

Notes:
- 63: Responsável: A definir · A definir / Status no painel: Não iniciado / Origem: atividade definida no planejamento / Sem datas no ClickUp: usadas as datas do marco / Comentário: Confirmar com Daniel
- 64: Responsável: A definir · A definir / Status no painel: Não iniciado / Origem: atividade definida no planejamento / Sem datas no ClickUp: usadas as datas do marco
- 65: Responsável: A definir · A definir / Status no painel: Não iniciado / Origem: atividade definida no planejamento / Sem datas no ClickUp: usadas as datas do marco
- 66: Responsável: A definir · A definir / Status no painel: Não iniciado / Origem: atividade definida no planejamento / Sem datas no ClickUp: usadas as datas do marco
- 67: Responsável: A definir · A definir / Status no painel: Não iniciado / Origem: atividade definida no planejamento / Sem datas no ClickUp: usadas as datas do marco
- 69: Responsável: A definir · A definir / Status no painel: Não iniciado / Origem: atividade definida no planejamento
- 70: Responsável: Binário · Guilherme Lopes / Tiago Gomes de Oliveira / Status no painel: Em andamento / Origem: atividade definida no planejamento
- 71: Responsável: A definir · A definir / Status no painel: Não iniciado / Origem: atividade definida no planejamento
- 72: Responsável: A definir · A definir / Status no painel: Não iniciado / Origem: atividade definida no planejamento
- 73: Responsável: A definir · A definir / Status no painel: Não iniciado / Origem: atividade definida no planejamento
- 74: Responsável: A definir · A definir / Status no painel: Não iniciado / Origem: atividade definida no planejamento
- 75: Responsável: A definir · A definir / Status no painel: Não iniciado / Origem: atividade definida no planejamento
- 76: Responsável: A definir · A definir / Status no painel: Não iniciado / Origem: atividade definida no planejamento
- 77: Responsável: A definir · A definir / Status no painel: Não iniciado / Origem: atividade definida no planejamento
